# 项目进度计划

Schedule from MS Project, 2024-04-07 to 2024-04-19.

## Calendars

- 标准: Mon-Fri 08:00-12:00, 13:00-17:00; Sat-Sun off.

## Resources

| Resource |
| --- |
| <新资源> |
| 应用服务器 |
| 备份服务器 |
| 测试服务器 |
| 主数据库 |
| 备份数据库 |

## Schedule

| ID | WBS | Task | Type | Duration | Start | Finish | Predecessors | Total slack | Free slack | Constraint | Resources | Work |
| --- | --- | --- | --- | --- | --- | --- | --- | --- | --- | --- | --- | --- |
| 2 | 1 | **开发环境准备** |  | 10d? | 2024-04-08 | 2024-04-19 |  |  |  |  |  | 80h |
| 3 | 1.1 | 服务器准备 |  | 2d | 2024-04-08 | 2024-04-09 |  | 7d | 0d | finish no earlier than 2024-04-09 | 应用服务器; 备份服务器; 测试服务器 | 48h |
| 4 | 1.2 | 数据库准备 |  | 2d | 2024-04-08 | 2024-04-09 |  | 7d | 0d | finish no earlier than 2024-04-09 | 主数据库; 备份数据库 | 32h |
| 5 | 1.3 | **系统管理** |  | 1d? | 2024-04-09 | 2024-04-10 | 3, 4, 24 | 7d |  |  |  |  |
| 6 | 1.3.1 | **历史记录管理** |  | 0d | 2024-04-09 | 2024-04-09 |  | 8d |  |  |  |  |
| 7 | 1.3.1.1 | 备份系统 | manual | 1d? | 2024-04-09 | 2024-04-10 |  |  |  |  |  |  |
| 8 | 1.3.1.2 | 日志记录 | manual | 1d? | 2024-04-09 | 2024-04-10 |  |  |  |  |  |  |
| 9 | 1.3.1.3 | 服务器回滚 | manual | 1d? | 2024-04-09 | 2024-04-10 |  |  |  |  |  |  |
| 10 | 1.3.2 | 应用运行情况管理 |  | 1d? | 2024-04-10 | 2024-04-10 |  | 7d |  |  |  |  |
| 11 | 1.3.3 | **硬件运行情况管理** |  | 0d | 2024-04-09 | 2024-04-09 |  | 8d |  |  | 应用服务器 |  |
| 12 | 1.3.3.1 | CPU运行检测 | manual | 1d? | 2024-04-09 | 2024-04-10 |  |  |  |  |  |  |
| 13 | 1.3.3.2 | 内存运行检测 | manual | 1d? | 2024-04-09 | 2024-04-10 |  |  |  |  |  |  |
| 14 | 1.3.3.3 | 其他硬件监测 | manual | 1d? | 2024-04-09 | 2024-04-10 |  |  |  |  |  |  |
| 15 | 1.3.4 | **网络运行情况管理** |  | 0d | 2024-04-09 | 2024-04-09 |  | 8d |  |  |  |  |
| 16 | 1.3.4.1 | 前端网站连接维稳 | manual | 1d? | 2024-04-10 | 2024-04-10 |  |  |  |  |  |  |
| 17 | 1.3.4.2 | 备份服务器连接维稳 | manual | 1d? | 2024-04-10 | 2024-04-10 |  |  |  |  |  |  |
| 18 | 1.3.4.3 | 测试服务器连接维稳 | manual | 1d? | 2024-04-10 | 2024-04-10 |  |  |  |  |  |  |
| 19 | 1.3.4.4 | 后端数据库连接维稳 | manual | 1d? | 2024-04-10 | 2024-04-10 |  |  |  |  |  |  |
| 20 | 1.3.5 | **告警系统** |  | 0d | 2024-04-09 | 2024-04-09 |  | 8d |  |  |  |  |
| 21 | 1.3.5.1 | 警报启动 | manual | 1d? | 2024-04-09 | 2024-04-10 |  |  |  |  |  |  |
| 22 | 1.3.5.2 | 警报解除 | manual | 1d? | 2024-04-09 | 2024-04-10 |  |  |  |  |  |  |
| 24 | 1.4 | **前端视图准备** |  | 0d | 2024-04-08 | 2024-04-08 |  | 9d | 2d |  |  |  |
| 25 | 1.4.1 | 视图准备 | manual | 1d? | 2024-04-08 | 2024-04-08 |  |  |  |  |  |  |
| 26 | 1.4.2 | 权限接口 | manual | 1d? | 2024-04-08 | 2024-04-08 |  |  |  |  |  |  |
| 28 | 2 | 账号登录注册模块 |  | 1d? | 2024-04-08 | 2024-04-08 |  | 9d |  |  |  |  |
| 30 | 3 | 数据上报 | manual | 1d? | 2024-04-07 | 2024-04-07 |  |  |  |  |  |  |
| 32 | 4 | 数据管理 | manual | 1d? | 2024-04-07 | 2024-04-07 |  |  |  |  |  |  |
| 34 | 5 | 数据可视化 | manual | 1d? | 2024-04-07 | 2024-04-07 |  |  |  |  |  |  |
| 36 | 6 | 通知模块 | manual | 1d? | 2024-04-07 | 2024-04-07 |  |  |  |  |  |  |

| ID | WBS | Task | Type | Duration | Start | Finish | Total slack |
| --- | --- | --- | --- | --- | --- | --- | --- |
| 38 | 7 | **验收** |  | 0d | 2024-04-07 | 2024-04-07 | 10d |
| 39 | 7.1 | 开发环境验收 | manual | 1d? | 2024-04-07 | 2024-04-07 |  |
| 40 | 7.2 | 中央参数平台验收 | manual | 1d? | 2024-04-07 | 2024-04-07 |  |
| 42 | 8 | **单元测试流** |  | 0d | 2024-04-07 | 2024-04-07 | 10d |
| 43 | 8.1 | 服务器稳定性测试 | manual | 1d? | 2024-04-07 | 2024-04-07 |  |
| 44 | 8.2 | 回滚测试 | manual | 1d? | 2024-04-07 | 2024-04-07 |  |
| 45 | 8.3 | 历史记录测试 | manual | 1d? | 2024-04-07 | 2024-04-07 |  |
| 47 | 9 | 集成测试流 | manual | 1d? | 2024-04-07 | 2024-04-07 |  |
| 49 | 10 | 系统测试 | manual | 1d? | 2024-04-07 | 2024-04-07 |  |
| 51 | 11 | 实施 | manual | 1d | 2024-04-07 | 2024-04-07 |  |
